# Agile Project Management

Schedule from MS Project, 2014-06-16 to 2014-07-31.

## Calendars

- 标准: Mon-Fri 08:00-12:00, 13:00-17:00; Sat-Sun off.

## Resources

| Resource | Group |
| --- | --- |
| 丁志浩 | 开发 |
| 黄启彬 | 开发 |
| 资源B | 开发 |
| 资源A | 开发 |
| 张力 | 规划用户 |
| 规划用户A | 规划用户 |
| 资金用户 | 财务用户 |
| 资产用户 | 财务用户 |
| 发管中心用户 | 机务用户 |
| 技术标准用户 | 机务用户 |
| 机身系统用户 | 机务用户 |
| 航材用户 | 机务用户 |

## Schedule

| ID | WBS | Task | Type | Duration | Start | Finish | Predecessors | Total slack | Free slack | Constraint | Resources | Work |
| --- | --- | --- | --- | --- | --- | --- | --- | --- | --- | --- | --- | --- |
| 1 | 1 | 测试准备 | manual | 2w | 2014-06-16 | 2014-06-27 |  |  |  |  |  |  |
| 2 | 2 | 培训、测试 | manual | 2w | 2014-06-30 | 2014-07-11 |  |  |  |  |  |  |
| 3 | 3 | 试运行 |  | 1d? | 2014-06-16 | 2014-06-16 |  | 33d |  |  |  |  |
| 4 | 4 | 编写测试用例 |  | 9d | 2014-06-17 | 2014-06-27 |  | 24d |  | finish no earlier than 2014-06-27 | 资源A | 72h |
| 5 | 5 | 编写操作手册 |  | 9d? | 2014-06-17 | 2014-06-27 |  | 24d |  | finish no earlier than 2014-06-27 | 资源B | 72h |
| 6 | 6 | **系统完善** |  | 22d? | 2014-06-16 | 2014-07-15 |  | 0d |  |  |  | 148h |
| 7 | 6.1 | **框架** |  | 5d | 2014-06-16 | 2014-06-20 |  |  |  |  |  | 12h |
| 8 | 6.1.1 | 单点登录 |  | 3d | 2014-06-16 | 2014-06-18 |  | 2d | 0d |  | 丁志浩 [50%] | 12h |
| 9 | 6.2 | **基础管理模块** |  | 2d | 2014-06-26 | 2014-06-27 |  | 24d |  |  |  | 8h |
| 10 | 6.2.1 | 基础数据维护页面 |  | 2d | 2014-06-26 | 2014-06-27 |  | 24d |  |  | 丁志浩 [50%] | 8h |
| 11 | 6.3 | **运力规划模块** |  | 16d? | 2014-06-23 | 2014-07-14 |  | 13d |  |  |  | 32h |
| 12 | 6.3.1 | 后台计算 |  | 1d? | 2014-06-23 | 2014-06-23 |  | 28d |  |  | 黄启彬 | 8h |
| 13 | 6.3.2 | 查询单机档案 |  | 6d? | 2014-07-07 | 2014-07-14 | 38 | 13d |  | start no earlier than 2014-07-07 | 丁志浩 [50%] | 24h |
| 14 | 6.4 | **采购合同模块** |  | 2d? | 2014-06-23 | 2014-06-24 |  | 26d |  |  |  | 8h |
| 15 | 6.4.1 | 匹配计划飞机 |  | 2d? | 2014-06-23 | 2014-06-24 | 17 | 26d | 0d |  | 丁志浩 [50%] | 8h |
| 16 | 6.5 | **应付款模块** |  | 5d? | 2014-06-19 | 2014-06-25 |  | 26d |  |  |  | 12h |
| 17 | 6.5.1 | 付款计划数据视图调整 |  | 2d? | 2014-06-19 | 2014-06-20 | 8 | 26d | 0d |  | 丁志浩 [50%] | 8h |
| 18 | 6.5.2 | 分析付款计划执行 |  | 1d? | 2014-06-25 | 2014-06-25 | 15 | 26d |  |  | 丁志浩 [50%] | 4h |
| 19 | 6.6 | **发动机管理模块** |  | 22d? | 2014-06-16 | 2014-07-15 |  | 12d |  |  |  | 60h |
| 20 | 6.6.1 | 后台计算调试 |  | 1d? | 2014-06-24 | 2014-06-24 |  | 27d |  |  | 黄启彬 | 8h |
| 21 | 6.6.2 | APU滑油监控页面 |  | 1d? | 2014-06-30 | 2014-06-30 |  | 23d |  |  | 丁志浩 [50%] | 4h |
| 22 | 6.6.3 | 维护在位信息页面 |  | 2d? | 2014-06-16 | 2014-06-17 |  | 22d | 2d |  | 黄启彬 | 16h |
| 23 | 6.6.4 | 查询控制方案 |  | 1d? | 2014-06-18 | 2014-06-18 |  | 21d | 1d |  | 黄启彬 | 8h |
| 24 | 6.6.5 | 查询到寿日期 |  | 1d? | 2014-06-19 | 2014-06-19 |  | 20d | 0d |  | 黄启彬 | 8h |
| 25 | 6.6.6 | 租赁月度报表数据查询 |  | 2d? | 2014-07-14 | 2014-07-15 | 30 | 12d |  | start no earlier than 2014-06-30 | 黄启彬 | 16h |

Notes:
- 10: 币种、舱位等级、发动机型号、发动机推力等级、供应商、制造商

| ID | WBS | Task | Duration | Start | Finish | Predecessors | Total slack | Free slack | Constraint | Resources | Work |
| --- | --- | --- | --- | --- | --- | --- | --- | --- | --- | --- | --- |
| 26 | 6.7 | **适航管理模块** | 1d? | 2014-06-25 | 2014-06-25 |  | 26d |  |  |  | 8h |
| 27 | 6.7.1 | AD/SB数据导入 | 1d? | 2014-06-25 | 2014-06-25 |  | 26d |  |  | 黄启彬 | 8h |
| 28 | 6.8 | **文档库模块** | 1d? | 2014-06-26 | 2014-06-26 |  | 25d |  |  |  | 8h |
| 29 | 6.8.1 | 建索引的后台服务 | 1d? | 2014-06-26 | 2014-06-26 |  | 25d |  |  | 黄启彬 | 8h |
| 30 | 7 | **系统集成** | 10d? | 2014-06-20 | 2014-07-03 | 22, 23, 24 | 11d | 0d |  |  | 24h |
| 31 | 7.1 | 同步供应商 | 1d? | 2014-06-20 | 2014-06-20 |  | 20d |  |  | 黄启彬 | 8h |
| 32 | 7.2 | 同步发动机件号 | 1d? | 2014-06-27 | 2014-06-27 |  | 15d |  |  | 黄启彬 | 8h |
| 33 | 7.3 | 同步发动机序号 | 1d? | 2014-07-03 | 2014-07-03 |  | 11d |  |  | 黄启彬 | 8h |
| 34 | 8 | **基础数据维护** | 3d? | 2014-06-30 | 2014-07-02 | 2SS | 21d |  |  |  | 42h |
| 35 | 8.1 | 权限管理 | 1d? | 2014-06-30 | 2014-06-30 |  | 23d |  |  | 资源A [25%] | 2h |
| 36 | 8.2 | 运力规划数据迁移 | 3d | 2014-06-30 | 2014-07-02 |  | 21d |  |  | 黄启彬 | 24h |
| 37 | 8.3 | 历史拆装记录导入 | 2d? | 2014-06-30 | 2014-07-01 |  | 22d |  |  | 资源B | 16h |
| 38 | 9 | **用户培训** | 4d? | 2014-06-30 | 2014-07-03 | 2SS | 0d |  |  |  | 16h |
| 39 | 9.1 | 规划 | 0.5d? | 2014-06-30 | 2014-06-30 |  | 3.5d |  | start no earlier than 2014-06-30 | 丁志浩 | 4h |
| 40 | 9.2 | 财务 | 0.5d? | 2014-07-01 | 2014-07-01 |  | 2d |  | finish no earlier than 2014-07-01 | 丁志浩 | 4h |
| 41 | 9.3 | 发管中心 | 0.5d? | 2014-07-02 | 2014-07-02 |  | 1d |  | finish no earlier than 2014-07-02 | 丁志浩 | 4h |
| 42 | 9.4 | 机务其他 | 0.5d | 2014-07-03 | 2014-07-03 |  | 0d |  | finish no earlier than 2014-07-03 | 丁志浩 | 4h |
| 43 | 10 | **功能测试** | 6d? | 2014-07-04 | 2014-07-11 | 38 | 0d |  |  |  | 128h |
| 44 | 10.1 | **开发方** | 6d? | 2014-07-04 | 2014-07-11 |  | 0d |  |  |  | 48h |
| 45 | 10.1.1 | 基础管理模块 | 0.25d? | 2014-07-04 | 2014-07-04 |  | 0d |  |  | 黄启彬 | 2h |
| 46 | 10.1.2 | 飞机构型模块 | 0.25d? | 2014-07-04 | 2014-07-04 | 45 | 0d |  |  | 黄启彬 | 2h |
| 47 | 10.1.3 | 运力规划模块 | 1d? | 2014-07-07 | 2014-07-07 | 53 | 0d |  |  | 黄启彬 | 8h |
| 48 | 10.1.4 | 采购合同模块 | 1d? | 2014-07-08 | 2014-07-08 | 47 | 0d |  |  | 黄启彬 | 8h |
| 49 | 10.1.5 | 应付款模块 | 1d? | 2014-07-09 | 2014-07-09 | 48 | 0d |  |  | 黄启彬 | 8h |
| 50 | 10.1.6 | 附件管理模块 | 0.5d? | 2014-07-11 | 2014-07-11 | 51 | 0d |  |  | 黄启彬 | 4h |
| 51 | 10.1.7 | 发动机管理模块 | 1d? | 2014-07-10 | 2014-07-10 | 49 | 0d |  |  | 黄启彬 | 8h |
| 52 | 10.1.8 | 适航管理模块 | 0.5d? | 2014-07-11 | 2014-07-11 | 50 | 0d |  |  | 黄启彬 | 4h |
| 53 | 10.1.9 | 文档库模块 | 0.5d? | 2014-07-04 | 2014-07-04 | 46 | 0d |  |  | 黄启彬 | 4h |

| ID | WBS | Task | Duration | Start | Finish | Predecessors | Total slack | Constraint | Resources | Work |
| --- | --- | --- | --- | --- | --- | --- | --- | --- | --- | --- |
| 54 | 10.2 | **川航** | 6d? | 2014-07-04 | 2014-07-11 |  | 0d |  |  | 80h |
| 55 | 10.2.1 | 基础管理模块 | 0.25d? | 2014-07-04 | 2014-07-04 | 45SS | 5.75d |  | 张力 | 2h |
| 56 | 10.2.2 | 飞机构型模块 | 0.25d? | 2014-07-04 | 2014-07-04 | 46SS | 5.5d |  | 张力 | 2h |
| 57 | 10.2.3 | 运力规划模块 | 1d? | 2014-07-07 | 2014-07-07 | 47SS | 4d |  | 张力 | 8h |
| 58 | 10.2.4 | 采购合同模块 | 1d? | 2014-07-08 | 2014-07-08 | 48SS | 3d |  | 张力; 资产用户; 资金用户 | 24h |
| 59 | 10.2.5 | 应付款模块 | 1d? | 2014-07-09 | 2014-07-09 | 49SS | 2d |  | 张力; 资产用户; 资金用户 | 24h |
| 60 | 10.2.6 | 附件管理模块 | 0.5d? | 2014-07-11 | 2014-07-11 | 50SS | 0.5d |  | 技术标准用户 | 4h |
| 61 | 10.2.7 | 发动机管理模块 | 1d? | 2014-07-10 | 2014-07-10 | 51SS | 1d |  | 发管中心用户 | 8h |
| 62 | 10.2.8 | 适航管理模块 | 0.5d? | 2014-07-11 | 2014-07-11 | 52SS | 0d |  | 机身系统用户 | 4h |
| 63 | 10.2.9 | 文档库模块 | 0.5d? | 2014-07-04 | 2014-07-04 | 53SS | 5d |  | 张力 | 4h |
| 64 | 11 | **Bug修改** | 24d? | 2014-06-30 | 2014-07-31 | 2SS | 0d |  |  | 128h |
| 65 | 11.1 | **基础管理模块** | 1d? | 2014-07-01 | 2014-07-01 |  | 22d |  |  | 8h |
| 66 | 11.1.1 | 维护经营证照 | 1d? | 2014-07-01 | 2014-07-01 |  | 22d |  | 资源A | 8h |
| 67 | 11.2 | **飞机构型模块** | 1d? | 2014-07-02 | 2014-07-02 |  | 21d |  |  | 8h |
| 68 | 11.2.1 | 维护飞机证照 | 1d? | 2014-07-02 | 2014-07-02 |  | 21d |  | 资源A | 8h |
| 69 | 11.3 | 运力规划模块 | 1d? | 2014-06-30 | 2014-06-30 |  | 23d |  |  |  |
| 70 | 11.4 | 采购合同模块 | 1d? | 2014-06-30 | 2014-06-30 |  | 23d |  |  |  |
| 71 | 11.5 | 应付款模块 | 1d? | 2014-06-30 | 2014-06-30 |  | 23d |  |  |  |
| 72 | 11.6 | 附件管理模块 | 1d? | 2014-06-30 | 2014-06-30 |  | 23d |  |  |  |
| 73 | 11.7 | 发动机管理模块 | 1d? | 2014-06-30 | 2014-06-30 |  | 23d |  |  |  |
| 74 | 11.8 | 适航管理模块 | 1d? | 2014-06-30 | 2014-06-30 |  | 23d |  |  |  |
| 75 | 11.9 | 文档库模块 | 1d? | 2014-06-30 | 2014-06-30 |  | 23d |  |  |  |
| 76 | 11.10 | 测试Bug修改 | 14d? | 2014-07-14 | 2014-07-31 | 43 | 0d | start no earlier than 2014-07-14 |  | 112h |
| 77 | 12 | **试运行数据准备** | 1d? | 2014-07-14 | 2014-07-14 | 43 | 13d |  |  |  |
| 78 | 12.1 | 权限配置 | 1d? | 2014-07-14 | 2014-07-14 |  | 13d |  |  |  |
| 79 | 12.2 | 运力规划数据迁移 | 1d? | 2014-07-14 | 2014-07-14 |  | 13d |  |  |  |
| 80 | 12.3 | 历史拆装记录导入 | 1d? | 2014-07-14 | 2014-07-14 |  | 13d |  |  |  |
| 81 | 12.4 | 基础配置 | 1d? | 2014-07-14 | 2014-07-14 |  | 13d |  |  |  |

Notes:
- 66: 维护扫描件，会出现OutOfMemory的溢出错误
- 68: 维护扫描件，会出现OutOfMemory的溢出错误
